# 4746 hub

Schedule from a web Gantt chart, 2024-08-09 to 2024-08-09.
Saturdays and Sundays are off

## Schedule

| ID | WBS | Task | Duration | Start | Finish |
| --- | --- | --- | --- | --- | --- |
| 2 | 1 | 确认 | 1d | 2024-08-09 | 2024-08-09 |
